How a schedule from an exported table changed from version to version. A marks actual dates.

## Version 1 (saved 2026-11-01)

Note of the change: Art 32(2) wording across D05, D07, KB and knowledge-base files (Module A routes for Class I)

| ID | Task | Start | Finish |
| --- | --- | --- | --- |
| M0 | Programme mobilised and funding envelope approved | 2026-11-02 | 2026-12-02 |
| A14I | Interim Art 14 24/7 cover confirmed (legally required since 11 Sep 2026) | 2026-11-02 | 2026-11-16 |
| A14 | Art 14 reporting cell fully staffed (about 6 FTE) | 2026-12-02 | 2027-04-01 |
| C1 | Borderline classification opinions ratified (8 positions) | 2026-12-02 | 2027-01-31 |
| C2 | Module H route decision and QS gap assessment (4 organisations) | 2026-12-02 | 2027-04-01 |
| QSD | Quality systems documented to Annex VIII Module H pt 3.2 | 2027-04-01 | 2027-06-30 |
| RA | Risk assessments and Annex I applicability matrices signed (all families) | 2027-01-31 | 2027-06-30 |
| E1P | Evidence pipeline pilot in shadow mode (Hearth Lock 3, Lumen Browser) | 2026-12-02 | 2027-04-01 |
| E1W1 | Evidence gate enforced for important products (wave 1) | 2027-04-01 | 2027-06-30 |
| E1W2 | Evidence gate GA for default products (wave 2) | 2027-06-30 | 2027-09-28 |
| E1W3 | Readiness drill - Art 13(22) export of 20 versions | 2027-09-28 | 2027-10-28 |
| NB0 | First CRA notified body with Module H scope designated (external) | 2026-11-02 | 2027-04-01 |
| NB2 | Second Module H body designated (lag after the first) | 2027-04-01 | 2027-05-31 |
| NB3 | Third Module H body designated (lag after the first; lever L3 only) | 2027-04-01 | 2027-07-30 |
| K_SW | Software-side body contracted (Lumen, Platforms) | 2027-04-01 | 2027-05-16 |
| K_HW | Hardware-side body contracted (Devices; Cloud and apps unless L3) | 2027-05-31 | 2027-07-15 |
| K_CL | Body for Cloud and apps contracted | 2027-05-31 | 2027-07-15 |
| H_LUM | Module H QS approval and model review - Lumen | 2027-06-30 | 2028-02-20 |
| H_PLT | Module H QS approval and model review - Platforms | 2027-06-30 | 2028-01-08 |
| H_DEV | Module H QS approval and model review - Devices | 2027-07-15 | 2028-03-30 |
| H_CLD | Module H QS approval and model review - Cloud and apps | 2027-07-15 | 2028-01-30 |
| TDN | Annex VII files for notified-body families | 2027-06-30 | 2027-09-28 |
| TDD | Annex VII files for default families | 2027-06-30 | 2027-09-13 |
| AII | Annex II user information drafted (portfolio) | 2027-06-30 | 2027-09-13 |
| TR | Annex II and DoC translations (23 languages) | 2027-09-13 | 2027-11-12 |
| D_LUM | First EU declarations issued - Lumen | 2028-02-20 | 2028-03-05 |
| D_PLT | First EU declarations issued - Platforms | 2028-01-08 | 2028-01-22 |
| D_DEV | First EU declarations issued - Devices (Class I) | 2028-03-30 | 2028-04-13 |
| D_CLD | First EU declarations issued - Cloud and apps (Class I and II) | 2028-01-30 | 2028-02-13 |
| D_DEF | Module A declarations issued - default-class families | 2027-11-12 | 2027-11-26 |
| OS1 | Steward and LTS decisions (HOSP, Lumen Engine, Tensile LTS) | 2026-12-02 | 2027-04-01 |
| OS2 | Halo early access decoupled; Tensile LTS opened | 2027-04-01 | 2027-06-30 |
| OS3 | Art 24(1) policies and OSS posture statement published | 2027-06-30 | 2027-07-30 |
| OS4 | Steward (dual-role) reporting live in the case engine | 2027-04-01 | 2027-05-31 |
| OS5 | Kite and Mooring transferred to foundations (not CRA-gating) | 2027-04-01 | 2027-11-27 |
| G1 | 43-control set adopted as the global standard | 2026-12-02 | 2027-01-01 |
| G2 | Declaration generator first release (EU, UK, JP, US data) | 2027-04-01 | 2027-06-30 |
| G3 | JC-STAR STAR-1 labels for Hearth and Pulse (target 30 Jun 2027) | 2027-06-30 | 2027-08-29 |
| G4 | UK PSTI statements of compliance regenerated from the evidence store | 2027-06-30 | 2027-07-30 |
| G5 | FCC final Cyber Trust Mark test procedures (external) | 2026-11-02 | 2028-01-26 |
| G6 | US Cyber Trust Mark labels, if pursued (not CRA-gating) | 2028-01-26 | 2028-04-25 |
| R_LUM | READY - Lumen (browser desktop and mobile, WebView) | 2028-03-05 | 2028-03-05 |
| R_PLT | READY - Platforms (Lumen OS, Halo Wear OS) | 2028-01-22 | 2028-01-22 |
| R_DEV | READY - Devices Class I (Hearth, Pulse, Keystone) | 2028-04-13 | 2028-04-13 |
| R_CLD | READY - Cloud and apps Class I and II (Authenticator, VPNs, Edge) | 2028-02-13 | 2028-02-13 |
| R_DEF | READY - Default-class products (Module A) | 2027-11-26 | 2027-11-26 |
| R_OSS | READY - Open-source stewardship (Art 24 from 11 Dec 2027) | 2027-07-30 | 2027-07-30 |
| R_A14 | READY - Art 14 desk at full strength (target 31 Mar 2027; required now) | 2027-04-01 | 2027-04-01 |
| END | All CRA product lines ready | 2028-04-13 | 2028-04-13 |

## Version 2 (saved 2026-11-01)

Note of the change: Enterprise E7: integrated programme case (budget, headcount, NB schedule, critical path, Monte Carlo readiness, sensitivity, Excel)

Last finish stays 2028-04-25.

Changed:

| ID | Task | Start | Finish |
| --- | --- | --- | --- |
| RA | Risk assessments and Annex I applicability matrices signed (all families) | 2027-01-31 → 2026-12-02 (-60d) | 2027-06-30 → 2027-05-01 (-60d) |
| TDN | Annex VII files for notified-body families | 2027-06-30 → 2027-05-01 (-60d) | 2027-09-28 → 2027-07-30 (-60d) |
| TDD | Annex VII files for default families | 2027-06-30 → 2027-05-01 (-60d) | 2027-09-13 → 2027-07-15 (-60d) |
| AII | Annex II user information drafted (portfolio) | 2027-06-30 → 2027-05-01 (-60d) | 2027-09-13 → 2027-07-15 (-60d) |
| TR | Annex II and DoC translations (23 languages) | 2027-09-13 → 2027-07-15 (-60d) | 2027-11-12 → 2027-09-13 (-60d) |
| D_DEF | Module A declarations issued - default-class families | 2027-11-12 → 2027-10-28 (-15d) | 2027-11-26 → 2027-11-11 (-15d) |
| G3 | JC-STAR STAR-1 labels for Hearth and Pulse (target 30 Jun 2027) | 2027-06-30 → 2027-01-01 (-180d) | 2027-08-29 → 2027-05-01 (-120d) |
| R_DEF | READY - Default-class products (Module A) | 2027-11-26 → 2027-11-11 (-15d) | 2027-11-26 → 2027-11-11 (-15d) |
